# Diagrama de Gantt

Schedule from MS Project, 2018-10-15 to 2020-02-21, 4 hours a day, costs in $, A marks actual dates.

## Calendars

- Estándar: Mon-Fri 07:00-11:00; Sat-Sun off. Exceptions (off unless hours are given): 2018-12-17 to 2019-02-01 (Receso Navidad), 2019-04-14 to 2019-04-21 (Semana santa), 2019-06-01 to 2019-06-30 (Receso mitad de año).

## Resources

| Resource | Group | Unit | Rate |
| --- | --- | --- | --- |
| Anderson Stiven Yaguma Diaz | Programador |  | 10000 |
| Jhostin David Cespedes Campo | Programador |  | 10000 |
| Otoniel Hernández Garzon | Programador |  | 10000 |
| servicios basicos | Servivios Publicos | Mensual | 800000 |
| DigitalOcean-Hosting | Servicios web | Mensual | 700000 |
| equipos | Herramienta | Mensual | 50000 |
| Dominio-latinoamerica | Servicios web | Mensual | 64500 |

## Schedule

| ID | WBS | Task | Duration | Start | Finish | Predecessors | Complete | Remaining | Total slack | Resources | Work | Actual work | Cost | Actual cost |
| --- | --- | --- | --- | --- | --- | --- | --- | --- | --- | --- | --- | --- | --- | --- |
| 1 | 1 | **Proyecto** | 295d | 2018-10-15 A | 2020-02-21 |  | 43% | 169.43d | 0d |  | 1808h | 808h | 28,567,000 | 12,109,000 |
| 2 | 1.1 | **Análisis y Planeación** | 47d | 2018-10-15 A | 2019-02-05 A |  | 100% |  |  | servicios basicos [1 Mensual]; DigitalOcean-Hosting; Dominio-latinoamerica; equipos | 372h | 372h | 4,520,000 | 4,520,000 |
| 3 | 1.1.1 | Programación estructurada | 5d | 2018-10-15 A | 2018-10-19 A |  | 100% |  |  | Anderson Stiven Yaguma Diaz; Jhostin David Cespedes Campo; Otoniel Hernández Garzon | 60h | 60h | 600,000 | 600,000 |
| 4 | 1.1.2 | Levantamiento de información | 5d | 2018-10-22 A | 2018-10-26 A | 3 | 100% |  |  | Anderson Stiven Yaguma Diaz | 20h | 20h | 200,000 | 200,000 |
| 5 | 1.1.3 | Aplicación de técnica de levantamiento de información | 5d | 2018-10-29 A | 2018-11-02 A | 4 | 100% |  |  | Anderson Stiven Yaguma Diaz; Jhostin David Cespedes Campo; Otoniel Hernández Garzon | 60h | 60h | 600,000 | 600,000 |
| 6 | 1.1.4 | Análisis de la información | 5d | 2018-11-05 A | 2018-11-09 A | 5 | 100% |  |  | Anderson Stiven Yaguma Diaz; Jhostin David Cespedes Campo; Otoniel Hernández Garzon | 60h | 60h | 600,000 | 600,000 |
| 7 | 1.1.5 | **Componente Metodológico** | 27d | 2018-11-12 A | 2019-02-05 A | 6 | 100% |  |  |  | 172h | 172h | 1,720,000 | 1,720,000 |
| 8 | 1.1.5.1 | Nombre del proyecto | 4d | 2018-11-12 A | 2018-11-15 A |  | 100% |  |  | Anderson Stiven Yaguma Diaz | 16h | 16h | 160,000 | 160,000 |
| 9 | 1.1.5.2 | Objetivo General | 5d | 2018-11-16 A | 2018-11-22 A | 8 | 100% |  |  | Otoniel Hernández Garzon | 20h | 20h | 200,000 | 200,000 |
| 10 | 1.1.5.3 | Objetivo Específicos | 5d | 2018-11-23 A | 2018-11-29 A | 9 | 100% |  |  | Otoniel Hernández Garzon | 20h | 20h | 200,000 | 200,000 |
| 11 | 1.1.5.4 | Planteamiento del Problema | 5d | 2018-11-30 A | 2018-12-06 A | 10 | 100% |  |  | Anderson Stiven Yaguma Diaz; Jhostin David Cespedes Campo | 40h | 40h | 400,000 | 400,000 |
| 12 | 1.1.5.5 | Alcance del proyecto | 5d | 2018-12-07 A | 2018-12-13 A | 11 | 100% |  |  | Anderson Stiven Yaguma Diaz; Otoniel Hernández Garzon | 40h | 40h | 400,000 | 400,000 |
| 13 | 1.1.5.6 | Justificación | 3d | 2018-12-14 A | 2019-02-05 A | 12 | 100% |  |  | Anderson Stiven Yaguma Diaz; Jhostin David Cespedes Campo; Otoniel Hernández Garzon | 36h | 36h | 360,000 | 360,000 |
| 14 | 1.2 | **Diseño** | 49.5d | 2019-02-04 A | 2019-04-22 |  | 99% | 0d |  | servicios basicos [2 Mensual]; equipos [2 Mensual]; DigitalOcean-Hosting [2 Mensual]; Dominio-latinoamerica [2 Mensual] | 256h | 256h | 5,789,000 | 4,174,500 |
| 15 | 1.2.1 | Requerimientos Funcionales | 4d | 2019-02-04 A | 2019-02-08 A |  | 100% |  |  | Otoniel Hernández Garzon | 16h | 16h | 160,000 | 160,000 |
| 16 | 1.2.2 | Requerimientos No Funcionales | 5d | 2019-02-11 A | 2019-02-18 A | 15 | 100% |  |  | Anderson Stiven Yaguma Diaz; Otoniel Hernández Garzon | 40h | 40h | 400,000 | 400,000 |
| 17 | 1.2.3 | BPMN | 5d | 2019-02-18 A | 2019-02-22 A | 16 | 100% |  |  | Otoniel Hernández Garzon | 20h | 20h | 200,000 | 200,000 |
| 18 | 1.2.4 | Modelo Entidad Relación | 5d | 2019-02-25 A | 2019-03-01 A | 17 | 100% |  |  | Anderson Stiven Yaguma Diaz | 20h | 20h | 200,000 | 200,000 |
| 19 | 1.2.5 | Diagrama de Entidad y Relación | 10d | 2019-03-04 A | 2019-03-15 A | 18 | 100% |  |  | Anderson Stiven Yaguma Diaz; Otoniel Hernández Garzon | 80h | 80h | 800,000 | 800,000 |
| 20 | 1.2.6 | Diagramas UML | 5d | 2019-03-18 A | 2019-03-22 A | 19 | 100% |  |  | Anderson Stiven Yaguma Diaz | 20h | 20h | 200,000 | 200,000 |
| 21 | 1.2.7 | Normalización de bases de datos | 5d | 2019-03-25 A | 2019-03-29 A | 20 | 100% |  |  | Otoniel Hernández Garzon | 20h | 20h | 200,000 | 200,000 |
| 22 | 1.2.8 | Prototipos y Mockup | 10d | 2019-04-01 A | 2019-04-12 A |  | 100% |  |  | Jhostin David Cespedes Campo | 40h | 40h | 400,000 | 400,000 |
| 23 | 1.3 | **Desarrollo Etapa 1** | 30d | 2019-04-22 A | 2019-05-31 A | 22 | 100% |  |  | servicios basicos [1 Mensual]; DigitalOcean-Hosting [1 Mensual]; Dominio-latinoamerica [1 Mensual]; equipos [1 Mensual] | 180h | 180h | 3,414,500 | 3,414,500 |
| 24 | 1.3.1 | Base de datos | 10d | 2019-04-22 A | 2019-05-03 A |  | 100% |  |  | Anderson Stiven Yaguma Diaz | 40h | 40h | 400,000 | 400,000 |
| 25 | 1.3.2 | Construcción de la Base de Datos | 10d | 2019-05-06 A | 2019-05-17 A | 24 | 100% |  |  | Otoniel Hernández Garzon; Jhostin David Cespedes Campo | 80h | 80h | 800,000 | 800,000 |
| 26 | 1.3.3 | Datos insertados en la Base de Datos | 5d | 2019-05-20 A | 2019-05-24 A | 25 | 100% |  |  | Anderson Stiven Yaguma Diaz; Otoniel Hernández Garzon | 40h | 40h | 400,000 | 400,000 |
| 27 | 1.3.4 | Consultas y Join en la Base y Datos | 5d | 2019-05-27 A | 2019-05-31 A | 26 | 100% |  |  | Jhostin David Cespedes Campo | 20h | 20h | 200,000 | 200,000 |

Notes:
- 6: Se agrega una Receso navideño
- 22: Se agrega la senama santa desde Abril 14 hasta 21.
- 27: Se agrega el receso de Junio del 1 hasta 30

| ID | WBS | Task | Duration | Start | Finish | Predecessors | Total slack | Resources | Work | Cost |
| --- | --- | --- | --- | --- | --- | --- | --- | --- | --- | --- |
| 28 | 1.4 | **Desarrollo Etapa 2** | 80d | 2019-07-01 | 2019-10-18 | 27 |  | servicios basicos [1 Mensual]; DigitalOcean-Hosting [1 Mensual]; Dominio-latinoamerica [1 Mensual]; equipos [1 Mensual] | 480h | 6,414,500 |
| 29 | 1.4.1 | Codificación y CRUD | 10d | 2019-07-01 | 2019-07-12 |  | 0d | Anderson Stiven Yaguma Diaz | 40h | 400,000 |
| 30 | 1.4.2 | Conexión de base de datos | 10d | 2019-07-15 | 2019-07-26 | 29 | 0d | Otoniel Hernández Garzon | 40h | 400,000 |
| 31 | 1.4.3 | CRUD Funcional módulos del sistema | 10d | 2019-07-29 | 2019-08-09 | 30 | 0d | Jhostin David Cespedes Campo | 40h | 400,000 |
| 32 | 1.4.4 | Desarrollo de los prottotipos con html, css y javascript | 20d | 2019-08-12 | 2019-09-06 | 31 | 0d | Anderson Stiven Yaguma Diaz; Jhostin David Cespedes Campo; Otoniel Hernández Garzon | 240h | 2,400,000 |
| 33 | 1.4.5 | Manual tecnico | 10d | 2019-09-09 | 2019-09-20 | 32 | 0d | Otoniel Hernández Garzon | 40h | 400,000 |
| 34 | 1.4.6 | Funcianamiento del plataformas | 20d | 2019-09-23 | 2019-10-18 | 33 | 0d | Jhostin David Cespedes Campo | 80h | 800,000 |
| 35 | 1.5 | **Prueba de Software** | 40d | 2019-10-21 | 2019-12-13 | 34 | 0d | servicios basicos [1 Mensual]; DigitalOcean-Hosting [1 Mensual]; Dominio-latinoamerica [1 Mensual]; equipos [1 Mensual] | 320h | 4,814,500 |
| 36 | 1.5.1 | Prueba de caja negra | 10d | 2019-10-21 | 2019-11-01 |  | 0d | Jhostin David Cespedes Campo; Otoniel Hernández Garzon | 80h | 800,000 |
| 37 | 1.5.2 | prueba de caja blanca | 10d | 2019-11-04 | 2019-11-15 | 36 | 0d | Jhostin David Cespedes Campo; Otoniel Hernández Garzon | 80h | 800,000 |
| 38 | 1.5.3 | prueba de estrés | 10d | 2019-11-18 | 2019-11-29 | 37 | 0d | Jhostin David Cespedes Campo; Otoniel Hernández Garzon | 80h | 800,000 |
| 39 | 1.5.4 | prueba de unitaria | 10d | 2019-12-02 | 2019-12-13 | 38 | 0d | Jhostin David Cespedes Campo; Otoniel Hernández Garzon | 80h | 800,000 |
| 40 | 1.6 | **Modelo De Calidad** | 50d | 2019-12-16 | 2020-02-21 | 39 | 0d | servicios basicos [1 Mensual]; DigitalOcean-Hosting [1 Mensual]; Dominio-latinoamerica [1 Mensual]; equipos [1 Mensual] | 200h | 3,614,500 |
| 41 | 1.6.1 | Formatos de calidad | 10d | 2019-12-16 | 2019-12-27 |  | 0d | Jhostin David Cespedes Campo | 40h | 400,000 |
| 42 | 1.6.2 | Elaboración de contratos | 10d | 2019-12-30 | 2020-01-10 | 41 | 0d | Otoniel Hernández Garzon | 40h | 400,000 |
| 43 | 1.6.3 | Construcción de calidad de usuario y operación | 30d | 2020-01-13 | 2020-02-21 | 42 | 0d | Jhostin David Cespedes Campo | 120h | 1,200,000 |
